# VideoProcessingCluster

How a schedule from MS Project changed from version to version. A marks actual dates.

## Version 1 (saved 2022-02-10)

Note of the change: Gioele 10.02.2022

| ID | WBS | Task | Duration | Start | Finish | Predecessors | Total float |
| --- | --- | --- | --- | --- | --- | --- | --- |
| 1 | 1 | **Video processing cluster** | 9.6d | 2022-01-27 09:05 | 2022-04-28 15:18 |  | 0d |
| 2 | 1.1 | **introduzione** | 1.31d | 2022-01-27 09:05 | 2022-02-03 14:00 |  | 1.04d |
| 3 |  | Analisi qdc | 2.5h | 2022-01-27 09:05 | 2022-01-27 11:35 |  | 1.04d |
| 4 |  | Creazione del gantt consuntivo | 3h | 2022-01-27 11:35 | 2022-01-27 15:30 | 3 | 1.04d |
| 5 |  | Creazione repository git-hub | 1h | 2022-01-27 15:30 | 2022-01-27 16:30 | 4 | 1.04d |
| 6 |  | use-case | 2h | 2022-02-03 09:05 | 2022-02-03 11:05 | 5 | 1.04d |
| 7 |  | test-case | 2h | 2022-02-03 11:05 | 2022-02-03 14:00 | 6 | 1.04d |
| 8 | 1.2 | **progettazione** | 1.5d | 2022-02-03 14:00 | 2022-02-17 12:05 |  | 1.04d |
| 9 |  | Schema della rete | 4h | 2022-02-03 14:00 | 2022-02-10 10:35 | 7 | 1.04d |
| 10 |  | GUI web | 4h | 2022-02-03 14:00 | 2022-02-10 10:35 | 7 | 1.04d |
| 11 |  | Database | 4h | 2022-02-03 14:00 | 2022-02-10 10:35 | 7 | 1.04d |
| 12 |  | Load balancer ricerca | 2h | 2022-02-10 10:35 | 2022-02-10 13:30 | 9, 10, 11 | 1.04d |
| 13 | 1.2.5 | **Server 1 e 2 macchina virtuale** | 0.75d | 2022-02-10 13:30 | 2022-02-17 12:05 |  | 1.04d |
| 14 |  | gestione delle sessioni | 6h | 2022-02-10 13:30 | 2022-02-17 12:05 | 12 | 1.54d |
| 15 |  | ricerca esecuzione in background dei video caricati | 6h | 2022-02-10 13:30 | 2022-02-17 12:05 | 12 | 1.54d |
| 16 |  | come produrre statistiche sui frame | 3h | 2022-02-10 13:30 | 2022-02-10 16:30 | 12 | 1.04d |
| 17 |  | come produrre un grafico con la frequenza dei frame | 3h | 2022-02-17 09:05 | 2022-02-17 12:05 | 16 | 1.04d |
| 18 | 1.3 | **implementazione** | 3.25d | 2022-02-17 12:05 | 2022-03-24 12:05 |  | 1.04d |
| 19 |  | macchina virtuale Server 1 e 2 | 4h | 2022-02-17 12:05 | 2022-02-24 09:35 | 17 | 1.04d |
| 20 |  | configurazione Server 1 e 2 | 10h | 2022-02-24 09:35 | 2022-03-10 14:00 | 19, 14, 15 | 1.04d |
| 21 |  | macchina virtuale database | 4h | 2022-02-17 12:05 | 2022-02-24 09:35 | 17 | 1.04d |
| 22 |  | configurazione database | 10h | 2022-02-24 09:35 | 2022-03-10 14:00 | 21 | 1.04d |
| 23 |  | macchina virtuale load balancer | 4h | 2022-02-17 12:05 | 2022-02-24 09:35 | 17 | 1.04d |
| 24 |  | configurazione load balancer | 10h | 2022-02-24 09:35 | 2022-03-10 14:00 | 23 | 1.04d |
| 25 | 1.3.7 | **struttura web** | 1.5d | 2022-03-10 14:00 | 2022-03-24 12:05 |  | 1.04d |
| 26 |  | pagina principale | 8h | 2022-03-10 14:00 | 2022-03-17 15:30 | 24, 20, 22 | 1.04d |
| 27 |  | pagina per statistiche e download | 4h | 2022-03-17 15:30 | 2022-03-24 12:05 | 26 | 1.04d |
| 28 | 1.4 | **test** | 2.5d | 2022-03-24 12:05 | 2022-04-14 13:30 |  | 1.04d |
| 29 |  | funzionamento database | 4h | 2022-03-24 12:05 | 2022-03-31 09:35 | 27 | 1.04d |
| 30 |  | funzionamento dei 2 server | 4h | 2022-03-31 09:35 | 2022-03-31 14:30 | 29 | 1.04d |
| 31 |  | funzionamento load balancer | 4h | 2022-03-31 14:30 | 2022-04-07 11:05 | 30 | 1.04d |
| 32 |  | funzionamento del sistema in generale | 4h | 2022-04-07 11:05 | 2022-04-07 16:00 | 31 | 1.04d |
| 33 |  | funzionamento del sistema senza un server o con troppo carico | 4h | 2022-04-07 16:00 | 2022-04-14 13:30 | 32 | 1.04d |
| 34 |  | Documentazione | 9.6d | 2022-01-27 09:05 | 2022-04-28 15:18 |  | 0d |

## Version 2 (saved 2022-04-07)

Note of the change: Gioele Cavallo 28.04.2022

Last finish stays 2022-04-28.

Changed:

| ID | Task | Start | Finish | Duration | Total float |
| --- | --- | --- | --- | --- | --- |
| 28 | **test** |  | 2022-04-14 13:30 → 2022-04-28 15:00 (+14d) | 2.5d → 3.5d | 1.04d → 0.04d |
| 29 | funzionamento database |  | 2022-03-31 09:35 → 2022-03-24 12:05 (-7d) | 4h → 0h | 1.04d → 0.04d |
| 30 | funzionamento dei 2 server | 2022-03-31 09:35 → 2022-03-24 12:05 (-7d) | 2022-03-31 14:30 → 2022-04-07 16:00 (+7d) | 4h → 16h | 1.04d → 0.04d |
| 31 | funzionamento load balancer | 2022-03-31 14:30 → 2022-04-07 16:00 (+7d) | 2022-04-07 11:05 → 2022-04-14 13:30 (+7d) |  | 1.04d → 0.04d |
| 32 | funzionamento del sistema in generale | 2022-04-07 11:05 → 2022-04-14 13:30 (+7d) | 2022-04-07 16:00 → 2022-04-28 10:05 (+21d) |  | 1.04d → 0.04d |
| 33 | funzionamento del sistema senza un server o con troppo carico | 2022-04-07 16:00 → 2022-04-28 10:05 (+21d) | 2022-04-14 13:30 → 2022-04-28 15:00 (+14d) |  | 1.04d → 0.04d |

## Version 3 (saved 2022-04-28)

Last finish 2022-04-28 → 2022-05-05 (+7d).

Changed:

| ID | Task | Start | Finish | Duration | Total float | Other |
| --- | --- | --- | --- | --- | --- | --- |
| 1 | **Video processing cluster** |  | 2022-04-28 15:18 → 2022-05-05 18:00 (+7d) | 9.6d → 10.56d |  |  |
| 8 | **progettazione** |  | 2022-02-17 12:05 → 2022-03-10 12:05 (+21d) | 1.5d → 3.12d | 0.04d → 1.38d |  |
| 12 | Load balancer ricerca |  | 2022-02-10 13:30 → 2022-02-24 13:30 (+14d) | 2h → 12h | 0.04d → 1.38d |  |
| 13 | **Server 1 e 2 macchina virtuale** | 2022-02-10 13:30 → 2022-02-24 13:30 (+14d) | 2022-02-17 12:05 → 2022-03-10 12:05 (+21d) |  | 0.04d → 1.38d |  |
| 14 | gestione delle sessioni | 2022-02-10 13:30 → 2022-02-24 13:30 (+14d) | 2022-02-17 12:05 → 2022-03-10 12:05 (+21d) |  | 0.54d → 1.75d |  |
| 15 | ricerca esecuzione in background dei video caricati | 2022-02-10 13:30 → 2022-02-24 13:30 (+14d) | 2022-02-17 12:05 → 2022-03-10 12:05 (+21d) |  | 0.54d → 1.75d |  |
| 16 | come produrre statistiche sui frame | 2022-02-10 13:30 → 2022-02-24 13:30 (+14d) | 2022-02-10 16:30 → 2022-02-24 16:30 (+14d) |  | 0.04d → 1.38d |  |
| 17 | come produrre un grafico con la frequenza dei frame | 2022-02-17 09:05 → 2022-03-10 09:05 (+21d) | 2022-02-17 12:05 → 2022-03-10 12:05 (+21d) |  | 0.04d → 1.38d |  |
| 18 | **implementazione** | 2022-02-17 12:05 → 2022-03-10 12:05 (+21d) | 2022-03-24 12:05 → 2022-03-31 15:30 (+7d) | 3.25d → 2.75d | 0.04d → 1.38d |  |
| 19 | macchina virtuale Server 1 e 2 | 2022-02-17 12:05 → 2022-03-10 12:05 (+21d) | 2022-02-24 09:35 → 2022-03-10 16:00 (+14d) | 4h → 3h | 0.04d → 1.38d |  |
| 20 | configurazione Server 1 e 2 | 2022-02-24 09:35 → 2022-03-10 16:00 (+14d) | 2022-03-10 14:00 → 2022-03-17 15:30 (+7d) | 10h → 6h | 0.04d → 1.38d |  |
| 21 | macchina virtuale database | 2022-02-17 12:05 → 2022-03-10 12:05 (+21d) | 2022-02-24 09:35 → 2022-03-17 09:35 (+21d) |  | 0.04d → 2d |  |
| 22 | configurazione database | 2022-02-24 09:35 → 2022-03-17 09:35 (+21d) | 2022-03-10 14:00 → 2022-03-17 09:35 (+7d) | 10h → 0h | 0.04d → 2d |  |
| 23 | macchina virtuale load balancer | 2022-02-17 12:05 → 2022-03-10 12:05 (+21d) | 2022-02-24 09:35 → 2022-03-10 16:00 (+14d) | 4h → 3h | 0.04d → 1.38d |  |
| 24 | configurazione load balancer | 2022-02-24 09:35 → 2022-03-10 16:00 (+14d) | 2022-03-10 14:00 → 2022-03-17 15:30 (+7d) | 10h → 6h | 0.04d → 1.38d |  |
| 25 | **struttura web** | 2022-03-10 14:00 → 2022-03-17 15:30 (+7d) | 2022-03-24 12:05 → 2022-03-31 15:30 (+7d) | 1.5d → 1.62d | 0.04d → 1.38d |  |
| 26 | pagina principale | 2022-03-10 14:00 → 2022-03-17 15:30 (+7d) | 2022-03-17 15:30 → 2022-03-24 14:00 (+7d) | 8h → 5h | 0.04d → 1.38d |  |
| 27 | pagina per statistiche e download | 2022-03-17 15:30 → 2022-03-24 14:00 (+7d) | 2022-03-24 12:05 → 2022-03-31 15:30 (+7d) | 4h → 8h | 0.04d → 1.38d |  |
| 28 | **test** | 2022-03-24 12:05 → 2022-03-31 15:30 (+7d) | 2022-04-28 15:00 → 2022-04-28 11:05 | 3.5d → 2d | 0.04d → 1.38d |  |
| 29 | funzionamento database | 2022-03-24 12:05 → 2022-03-31 15:30 (+7d) | 2022-03-24 12:05 → 2022-03-31 15:30 (+7d) |  | 0.04d → 1.38d |  |
| 30 | funzionamento dei 2 server | 2022-03-24 12:05 → 2022-03-31 15:30 (+7d) | 2022-04-07 16:00 → 2022-04-07 12:05 | 16h → 4h | 0.04d → 1.38d |  |
| 31 | funzionamento load balancer | 2022-04-07 16:00 → 2022-04-07 12:05 | 2022-04-14 13:30 → 2022-04-14 09:35 |  | 0.04d → 1.38d |  |
| 32 | funzionamento del sistema in generale | 2022-04-14 13:30 → 2022-04-14 09:35 | 2022-04-28 10:05 → 2022-04-14 14:30 (-14d) |  | 0.04d → 1.38d |  |
| 33 | funzionamento del sistema senza un server o con troppo carico | 2022-04-28 10:05 → 2022-04-14 14:30 (-14d) | 2022-04-28 15:00 → 2022-04-28 11:05 |  | 0.04d → 1.38d |  |
| 34 | Documentazione | 2022-01-27 09:05 → 2022-02-03 10:17 (+7d) | 2022-04-28 15:18 → 2022-05-05 18:00 (+7d) |  |  | constraint none → finish no earlier than 2022-05-05 18:00; baseline finish 2022-04-28 15:18 → 2022-05-05 18:00 |

## Version 4 (saved 2022-05-05)

Note of the change: Gioele Cavallo 05.05.2022

Last finish stays 2022-05-05.

Changed:

| ID | Task | Other |
| --- | --- | --- |
| 33 | funzionamento del sistema senza un server o con troppo carico | constraint none → finish no earlier than 2022-04-14 18:00 |
