# VideoProcessingCluster

How a schedule from MS Project changed from version to version. A marks actual dates.

## Version 1 (saved 2022-02-03)

Note of the change: Gioele 03.02.2022

| ID | WBS | Task | Duration | Start | Finish | Predecessors | Total float |
| --- | --- | --- | --- | --- | --- | --- | --- |
| 1 | 1 | **Video processing cluster** | 9.6d | 2022-01-27 09:05 | 2022-04-28 15:18 |  | 0d |
| 2 | 1.1 | **introduzione** | 1.31d | 2022-01-27 09:05 | 2022-02-03 14:00 |  | 0.54d |
| 3 |  | Analisi qdc | 2.5h | 2022-01-27 09:05 | 2022-01-27 11:35 |  | 0.54d |
| 4 |  | Creazione del gantt consuntivo | 3h | 2022-01-27 11:35 | 2022-01-27 15:30 | 3 | 0.54d |
| 5 |  | Creazione repository git-hub | 1h | 2022-01-27 15:30 | 2022-01-27 16:30 | 4 | 0.54d |
| 6 |  | use-case | 2h | 2022-02-03 09:05 | 2022-02-03 11:05 | 5 | 0.54d |
| 7 |  | test-case | 2h | 2022-02-03 11:05 | 2022-02-03 14:00 | 6 | 0.54d |
| 8 | 1.2 | **progettazione** | 2d | 2022-02-03 14:00 | 2022-02-24 09:35 |  | 0.54d |
| 9 |  | Schema della rete | 4h | 2022-02-03 14:00 | 2022-02-10 10:35 | 7 | 0.54d |
| 10 |  | GUI web | 4h | 2022-02-03 14:00 | 2022-02-10 10:35 | 7 | 0.54d |
| 11 |  | Database | 4h | 2022-02-03 14:00 | 2022-02-10 10:35 | 7 | 0.54d |
| 12 |  | Load balancer ricerca | 6h | 2022-02-10 10:35 | 2022-02-17 10:05 | 9, 10, 11 | 0.54d |
| 13 | 1.2.5 | **Server 1 e 2 macchina virtuale** | 0.75d | 2022-02-17 10:05 | 2022-02-24 09:35 |  | 0.54d |
| 14 |  | gestione delle sessioni | 6h | 2022-02-17 10:05 | 2022-02-24 09:35 | 12 | 1.04d |
| 15 |  | ricerca esecuzione in background dei video caricati | 6h | 2022-02-17 10:05 | 2022-02-24 09:35 | 12 | 1.04d |
| 16 |  | come produrre statistiche sui frame | 3h | 2022-02-17 10:05 | 2022-02-17 14:00 | 12 | 0.54d |
| 17 |  | come produrre un grafico con la frequenza dei frame | 3h | 2022-02-17 14:00 | 2022-02-24 09:35 | 16 | 0.54d |
| 18 | 1.3 | **implementazione** | 3.25d | 2022-02-24 09:35 | 2022-03-31 09:35 |  | 0.54d |
| 19 |  | macchina virtuale Server 1 e 2 | 4h | 2022-02-24 09:35 | 2022-02-24 14:30 | 17 | 0.54d |
| 20 |  | configurazione Server 1 e 2 | 10h | 2022-02-24 14:30 | 2022-03-17 10:35 | 19, 14, 15 | 0.54d |
| 21 |  | macchina virtuale database | 4h | 2022-02-24 09:35 | 2022-02-24 14:30 | 17 | 0.54d |
| 22 |  | configurazione database | 10h | 2022-02-24 14:30 | 2022-03-17 10:35 | 21 | 0.54d |
| 23 |  | macchina virtuale load balancer | 4h | 2022-02-24 09:35 | 2022-02-24 14:30 | 17 | 0.54d |
| 24 |  | configurazione load balancer | 10h | 2022-02-24 14:30 | 2022-03-17 10:35 | 23 | 0.54d |
| 25 | 1.3.7 | **struttura web** | 1.5d | 2022-03-17 10:35 | 2022-03-31 09:35 |  | 0.54d |
| 26 |  | pagina principale | 8h | 2022-03-17 10:35 | 2022-03-24 12:05 | 24, 20, 22 | 0.54d |
| 27 |  | pagina per statistiche e download | 4h | 2022-03-24 12:05 | 2022-03-31 09:35 | 26 | 0.54d |
| 28 | 1.4 | **test** | 2.5d | 2022-03-31 09:35 | 2022-04-28 10:05 |  | 0.54d |
| 29 |  | funzionamento database | 4h | 2022-03-31 09:35 | 2022-03-31 14:30 | 27 | 0.54d |
| 30 |  | funzionamento dei 2 server | 4h | 2022-03-31 14:30 | 2022-04-07 11:05 | 29 | 0.54d |
| 31 |  | funzionamento load balancer | 4h | 2022-04-07 11:05 | 2022-04-07 16:00 | 30 | 0.54d |
| 32 |  | funzionamento del sistema in generale | 4h | 2022-04-07 16:00 | 2022-04-14 13:30 | 31 | 0.54d |
| 33 |  | funzionamento del sistema senza un server o con troppo carico | 4h | 2022-04-14 13:30 | 2022-04-28 10:05 | 32 | 0.54d |
| 34 |  | Documentazione | 9.6d | 2022-01-27 09:05 | 2022-04-28 15:18 |  | 0d |

## Version 2 (saved 2022-05-05)

Note of the change: Gioele Cavallo 05.05.2022

Last finish 2022-04-28 → 2022-05-05 (+7d).

Changed:

| ID | Task | Start | Finish | Duration | Total float | Other |
| --- | --- | --- | --- | --- | --- | --- |
| 1 | **Video processing cluster** |  | 2022-04-28 15:18 → 2022-05-05 16:30 (+7d) | 9.6d → 10.56d |  |  |
| 14 | gestione delle sessioni |  | 2022-02-24 09:35 → 2022-02-17 16:00 (-7d) | 6h → 5h | 1.04d → 2.12d |  |
| 15 | ricerca esecuzione in background dei video caricati |  | 2022-02-24 09:35 → 2022-02-17 16:00 (-7d) | 6h → 5h | 1.04d → 2.12d |  |
| 28 | **test** |  | 2022-04-28 10:05 → 2022-04-28 18:00 | 2.5d → 3.19d | 0.54d → 0.81d |  |
| 33 | funzionamento del sistema senza un server o con troppo carico | 2022-04-14 13:30 → 2022-04-28 11:35 (+14d) | 2022-04-28 10:05 → 2022-04-28 18:00 |  | 0.54d → 0.81d | constraint none → finish no earlier than 2022-04-28 18:00 |
| 34 | Documentazione |  | 2022-04-28 15:18 → 2022-05-05 16:30 (+7d) | 9.6d → 10.56d |  | constraint none → start no earlier than 2022-01-27 09:00; baseline finish 2022-04-28 15:18 → 2022-05-05 18:00 |
